# 总eWeb_软件进度计划

Schedule from MS Project, 2018-07-19 to 2018-08-24, costs in ¥, A marks actual dates.

## Calendars

- 标准: Mon-Fri 08:00-12:00, 13:00-17:00; Sat-Sun off.

## Resources

| Resource |
| --- |
| 陈嘉康 |
| 方兆彬 |
| 黄一桂 |
| 陈展望 |
| 房租 |

## Schedule

| ID | WBS | Task | Type | Duration | Start | Finish | Predecessors | Complete | Remaining | Actual start | Actual finish | Total slack | Resources | Work | Actual work | Cost | Actual cost |
| --- | --- | --- | --- | --- | --- | --- | --- | --- | --- | --- | --- | --- | --- | --- | --- | --- | --- |
| 1 | 1 | **社区金融便民服务平台-恵家 E 站** |  | 27d | 2018-07-19 A | 2018-08-24 |  | 26% | 19.97d |  |  |  | 房租 | 640h | 256h | 20,383.2 | 13,200 |
| 2 | 1.1 | 笔记本 |  | 26d | 2018-07-19 | 2018-08-23 |  |  |  |  |  | 1d |  |  |  |  |  |
| 3 | 1.2 | 房租 |  | 26d | 2018-07-20 | 2018-08-24 | 6 |  |  |  |  | 0d |  |  |  |  |  |
| 4 | 1.3 | **先启阶段** |  | 6d | 2018-07-19 A | 2018-07-26 A |  | 100% |  |  |  |  |  | 256h | 256h | 13,200 | 13,200 |
| 5 | 1.3.1 | **项目管理** |  | 6d | 2018-07-19 A | 2018-07-26 A |  | 100% |  |  |  |  | 陈嘉康 | 48h | 48h | 3,168 | 3,168 |
| 6 | 1.3.1.1 | 立项 |  | 1d | 2018-07-19 A | 2018-07-19 A |  | 100% |  |  |  |  |  |  |  |  |  |
| 7 | 1.3.1.2 | 制定项目开发计划 |  | 2d | 2018-07-20 A | 2018-07-23 A | 6 | 100% |  |  |  |  |  |  |  |  |  |
| 8 | 1.3.1.3 | 制定项目进度计划 |  | 2d | 2018-07-20 A | 2018-07-23 A | 6 | 100% |  |  |  |  |  |  |  |  |  |
| 9 | 1.3.2 | **配置管理** |  | 2d | 2018-07-19 A | 2018-07-20 A | 7 | 100% |  |  |  |  | 陈展望 | 16h | 16h | 528 | 528 |
| 10 | 1.3.2.1 | 制定配置计划 |  | 2d | 2018-07-19 A | 2018-07-20 A |  | 100% |  |  |  |  |  |  |  |  |  |
| 11 | 1.3.2.2 | 搭建配置环境 |  | 2d | 2018-07-19 A | 2018-07-20 A |  | 100% |  |  |  |  |  |  |  |  |  |
| 12 | 1.3.3 | 同行评审 | manual | 1d | 2018-07-19 A | 2018-07-19 A |  | 100% |  |  |  |  | 陈嘉康; 陈展望; 方兆彬; 黄一桂 | 32h | 32h | 1,320 | 1,320 |
| 13 | 1.3.4 | **需求开发** |  | 5d | 2018-07-21 | 2018-07-26 | 7 | 100% |  | 2018-07-23 | 2018-07-25 |  |  | 128h | 128h | 6,072 | 6,072 |
| 14 | 1.3.4.1 | 制定软件需求规约 |  | 2d | 2018-07-23 A | 2018-07-24 A |  | 100% |  |  |  |  | 陈嘉康 | 16h | 16h | 1,056 | 1,056 |
| 15 | 1.3.4.2 | 用例建模 |  | 3d | 2018-07-23 A | 2018-07-25 A |  | 100% |  |  |  |  | 陈嘉康; 陈展望; 方兆彬; 黄一桂 | 96h | 96h | 3,960 | 3,960 |
| 16 | 1.3.4.3 | 需求变更 |  | 2d | 2018-07-23 A | 2018-07-24 A |  | 100% |  |  |  |  | 陈嘉康 | 16h | 16h | 1,056 | 1,056 |
| 17 | 1.3.5 | **测试计划** |  | 4d | 2018-07-19 A | 2018-07-24 A | 7 | 100% |  |  |  |  | 陈嘉康 | 32h | 32h | 2,112 | 2,112 |
| 18 | 1.3.5.1 | 制定测试计划 |  | 2d | 2018-07-19 A | 2018-07-20 A |  | 100% |  |  |  |  |  |  |  |  |  |
| 19 | 1.3.5.2 | 系统测试用例设计 |  | 2d | 2018-07-19 A | 2018-07-20 A |  | 100% |  |  |  |  |  |  |  |  |  |
| 20 | 1.3.6 | **阶段评审** |  | 6d | 2018-07-26 A | 2018-08-02 | 9FS+3d | 100% |  |  | 2018-07-26 |  |  |  |  |  |  |
| 21 | 1.3.6.1 | 先启配置状态审计 |  | 1d | 2018-07-26 A | 2018-07-26 A |  | 100% |  |  |  |  |  |  |  |  |  |
| 22 | 1.3.6.2 | **<新摘要任务>** |  | 1d | 2018-07-26 A | 2018-07-26 A |  | 100% |  |  |  |  |  |  |  |  |  |
| 23 | 1.3.6.2.1 | <新里程碑> |  | 1d | 2018-07-26 A | 2018-07-26 A |  | 100% |  |  |  |  |  |  |  |  |  |
| 24 | 1.3.6.3 | 评审需求工件 |  | 1d | 2018-07-26 A | 2018-07-26 A |  | 100% |  |  |  |  |  |  |  |  |  |
| 25 | 1.3.6.4 | 发布需求基线 |  | 1d | 2018-07-26 A | 2018-07-26 A |  | 100% |  |  |  |  |  |  |  |  |  |

| ID | WBS | Task | Duration | Start | Finish | Predecessors | Total slack | Resources | Work | Cost |
| --- | --- | --- | --- | --- | --- | --- | --- | --- | --- | --- |
| 26 | 1.4 | **精化阶段** | 6d | 2018-07-27 | 2018-08-03 | 4 |  |  | 168h | 6,600 |
| 27 | 1.4.1 | **软件系统设计** | 6d | 2018-07-27 | 2018-08-03 |  |  |  | 168h | 6,600 |
| 28 | 1.4.1.1 | 制定软件系统设计说明书 | 1d | 2018-07-27 | 2018-07-27 |  | 5d | 陈嘉康 | 8h | 528 |
| 29 | 1.4.1.2 | **OOAD** | 3d | 2018-07-27 | 2018-07-31 |  |  | 陈嘉康; 陈展望; 方兆彬; 黄一桂 | 96h | 3,960 |
| 30 | 1.4.1.2.1 | 分析模型 | 3d | 2018-07-27 | 2018-07-31 |  | 0d |  |  |  |
| 31 | 1.4.1.2.2 | 设计模型 | 3d | 2018-07-27 | 2018-07-31 |  | 0d |  |  |  |
| 32 | 1.4.1.3 | **数据库设计** | 4d | 2018-07-31 | 2018-08-03 |  |  | 方兆彬 | 32h | 1,056 |
| 33 | 1.4.1.3.1 | 设计数据库模型 | 4d | 2018-07-31 | 2018-08-03 |  | 0d |  |  |  |
| 34 | 1.4.1.3.2 | 制定数据库设计说明书 | 1d | 2018-07-31 | 2018-07-31 |  | 3d |  |  |  |
| 35 | 1.4.1.4 | 界面原型设计 | 2d | 2018-07-27 | 2018-07-30 |  | 4d | 方兆彬 | 16h | 528 |
| 36 | 1.4.1.5 | 集成测试用例设计 | 2d | 2018-07-27 | 2018-07-30 |  | 4d | 黄一桂 | 16h | 528 |
| 37 | 1.4.2 | **阶段评审** | 1d | 2018-08-03 | 2018-08-03 |  |  |  |  |  |
| 38 | 1.4.2.1 | 精化配置状态审计 | 1d | 2018-08-03 | 2018-08-03 |  | 0d |  |  |  |
| 39 | 1.4.2.2 | 评审设计工件 | 1d | 2018-08-03 | 2018-08-03 |  | 0d |  |  |  |
| 40 | 1.4.2.3 | 发布设计基线 | 1d | 2018-08-03 | 2018-08-03 |  | 0d |  |  |  |
| 41 | 2 | **构建阶段** | 11d | 2018-08-04 | 2018-08-17 | 26 |  |  | 304h | 12,408 |
| 42 | 2.1 | 单元编码 | 6d | 2018-08-06 | 2018-08-13 |  | 4d | 陈嘉康; 陈展望; 方兆彬; 黄一桂 | 192h | 7,920 |
| 43 | 2.2 | 系统集成 | 3d | 2018-08-06 | 2018-08-08 |  | 7d | 陈嘉康; 陈展望; 方兆彬; 黄一桂 | 96h | 3,960 |
| 44 | 2.3 | 集成测试 | 2d | 2018-08-06 | 2018-08-07 |  | 8d | 黄一桂 | 16h | 528 |
| 45 | 2.4 | **阶段评审** | 1d | 2018-08-17 | 2018-08-17 |  |  |  |  |  |
| 46 | 2.4.1 | 构建配置状态审计 | 1d | 2018-08-17 | 2018-08-17 |  | 0d |  |  |  |
| 47 | 2.4.2 | 评审构建工件 | 1d | 2018-08-17 | 2018-08-17 |  | 0d |  |  |  |
| 48 | 2.4.3 | 发布构建基线 | 1d | 2018-08-17 | 2018-08-17 |  | 0d |  |  |  |
| 49 | 3 | **产品化阶段** | 4d | 2018-08-18 | 2018-08-22 | 41 |  |  | 48h | 2,376 |
| 50 | 3.1 | **产品发布** | 2d | 2018-08-18 | 2018-08-20 |  |  | 陈嘉康 | 16h | 1,056 |
| 51 | 3.1.1 | 编写产品安装手册 | 1d | 2018-08-20 | 2018-08-20 |  | 0d |  |  |  |
| 52 | 3.1.2 | 编写用户使用手册 | 1d | 2018-08-20 | 2018-08-20 |  | 0d |  |  |  |
| 53 | 3.1.3 | 编写项目开发总结报告 | 1d | 2018-08-20 | 2018-08-20 |  | 0d |  |  |  |

| ID | WBS | Task | Duration | Start | Finish | Total slack | Resources | Work | Cost |
| --- | --- | --- | --- | --- | --- | --- | --- | --- | --- |
| 54 | 3.2 | **产品部署** | 1d | 2018-08-21 | 2018-08-21 |  | 陈嘉康; 陈展望; 方兆彬; 黄一桂 | 32h | 1,320 |
| 55 | 3.2.1 | 搭建环境 | 1d | 2018-08-21 | 2018-08-21 | 0d |  |  |  |
| 56 | 3.2.2 | 运行产品 | 1d | 2018-08-21 | 2018-08-21 | 0d |  |  |  |
| 57 | 3.2.3 | 产品测试 | 1d | 2018-08-21 | 2018-08-21 | 0d |  |  |  |
| 58 | 3.3 | **阶段评审** | 1d | 2018-08-22 | 2018-08-22 |  |  |  |  |
| 59 | 3.3.1 | 配置状态评审 | 1d | 2018-08-22 | 2018-08-22 | 0d |  |  |  |
| 60 | 3.3.2 | 评审产品 | 1d | 2018-08-22 | 2018-08-22 | 0d |  |  |  |
| 61 | 3.3.3 | 结项 | 1d | 2018-08-22 | 2018-08-22 | 0d |  |  |  |
